# GU2 Project Plan

Schedule from MS Project, 2023-01-18 to 2023-05-26, 7 hours a day, costs in £, A marks actual dates.
FVC
A system to manage legal cases

## Calendars

- Main Project Calendar: Mon-Fri 08:00-12:00, 13:00-17:00; Sat-Sun off. Exceptions (off unless hours are given): 2023-04-07 (Good Friday), 2023-04-10 (Easter Monday).

## Resources

| Resource | Rate |
| --- | --- |
| Project Manager | 40 |
| System Analyst | 45 |
| Business Analyst | 45 |
| Developer | 55 |
| Tester | 50 |

## Schedule

| ID | WBS | Task | Type | Duration | Start | Finish | Predecessors | Complete | Constraint | Deadline | Resources | Work | Actual work | Cost | Actual cost |
| --- | --- | --- | --- | --- | --- | --- | --- | --- | --- | --- | --- | --- | --- | --- | --- |
| 1 | 1 | **Inception Phase** |  | 18.43d | 2023-01-18 A | 2023-02-09 A |  | 100% |  | 2023-02-09 |  | 280h | 280h | 11,865 | 11,865 |
| 2 | 1.1 | **Assignment Brief Analysis** |  | 2d | 2023-01-18 A | 2023-01-19 A |  | 100% |  |  | System Analyst | 14h | 14h | 630 | 630 |
| 3 | 1.1.1 | Investigation of development routes |  | 0.33d | 2023-01-18 A | 2023-01-18 A |  | 100% |  |  |  |  |  |  |  |
| 4 | 1.1.2 | Investigation of methodologies |  | 0.33d | 2023-01-18 A | 2023-01-18 A |  | 100% |  |  |  |  |  |  |  |
| 5 | 1.1.3 | Perform natural language analysis on brief |  | 0.33d | 2023-01-18 A | 2023-01-18 A |  | 100% |  |  |  |  |  |  |  |
| 6 | 1.2 | **Initial Planning Models** |  | 2d | 2023-01-18 A | 2023-01-20 A |  | 100% |  |  | System Analyst | 14h | 14h | 630 | 630 |
| 7 | 1.2.1 | Devise initial functional requirements |  | 1d | 2023-01-18 A | 2023-01-19 A | 5 | 100% |  |  |  |  |  |  |  |
| 8 | 1.2.2 | Devise initial non-functional requirements |  | 1d | 2023-01-19 A | 2023-01-20 A | 7 | 100% |  |  |  |  |  |  |  |
| 9 | 1.2.3 | Create top-level use case diagram |  | 1d | 2023-01-19 A | 2023-01-20 A | 7 | 100% |  |  |  |  |  |  |  |
| 10 | 1.3 | **Information Gathering** |  | 3.67d | 2023-01-20 A | 2023-01-25 A |  | 100% |  |  |  | 14h | 14h | 630 | 630 |
| 11 | 1.3.1 | Client meeting 1 |  | 1h | 2023-01-25 A | 2023-01-25 A |  | 100% | start no earlier than 2023-01-25 |  |  |  |  |  |  |
| 12 | 1.3.2 | Undertake background research |  | 1d | 2023-01-20 A | 2023-01-20 A | 2, 6 | 100% |  |  | Business Analyst | 7h | 7h | 315 | 315 |
| 13 | 1.3.3 | Investigation of similar systems |  | 1d | 2023-01-20 A | 2023-01-20 A | 2, 6 | 100% |  |  | System Analyst | 7h | 7h | 315 | 315 |
| 14 | 1.4 | **Outline Project Aims** |  | 15.1d | 2023-01-20 A | 2023-02-09 A | 12, 13 | 100% |  |  |  | 84h | 84h | 3,815 | 3,815 |
| 15 | 1.4.1 | Refine initial functional requirements |  | 3d | 2023-01-20 A | 2023-01-25 A |  | 100% |  |  | System Analyst | 21h | 21h | 945 | 945 |
| 16 | 1.4.2 | Prioritise refined functional requirements |  | 1d | 2023-01-25 A | 2023-01-26 A | 15 | 100% |  |  | System Analyst; Developer | 14h | 14h | 700 | 700 |
| 17 | 1.4.3 | Refine initial non‑functional requirements |  | 2d | 2023-01-20 A | 2023-01-24 A |  | 100% |  |  | System Analyst | 14h | 14h | 630 | 630 |
| 18 | 1.4.4 | Refine top-level use case diagram |  | 2d | 2023-01-26 A | 2023-01-30 A | 16 | 100% |  |  | Business Analyst | 14h | 14h | 630 | 630 |
| 19 | 1.4.5 | Create conceptual model |  | 1d | 2023-01-20 A | 2023-01-23 A |  | 100% |  |  | System Analyst | 7h | 7h | 315 | 315 |
| 20 | 1.4.6 | Client meeting 2 |  | 1h | 2023-02-08 A | 2023-02-08 A |  | 100% | start no earlier than 2023-02-08 |  |  |  |  |  |  |
| 21 | 1.4.7 | Evaluate client meeting 2 |  | 1d | 2023-02-08 A | 2023-02-09 A | 20 | 100% |  |  |  |  |  |  |  |
| 22 | 1.4.8 | Feasibility Analysis |  | 1d | 2023-01-20 A | 2023-01-23 A |  | 100% |  |  | Project Manager | 7h | 7h | 280 | 280 |
| 23 | 1.4.9 | Create system proposal |  | 1d | 2023-01-20 A | 2023-01-23 A |  | 100% |  |  | System Analyst | 7h | 7h | 315 | 315 |
| 24 | 1.5 | Identify Required Resources |  | 1d | 2023-01-18 A | 2023-01-18 A |  | 100% |  |  | Project Manager | 7h | 7h | 280 | 280 |
| 25 | 1.6 | Prepare Action Plan |  | 14d | 2023-01-18 A | 2023-02-03 A |  | 100% |  |  | Project Manager | 98h | 98h | 3,920 | 3,920 |
| 26 | 1.7 | Prepare Project Plan |  | 7d | 2023-01-25 A | 2023-02-02 A | 6, 10 | 100% |  |  | Project Manager | 49h | 49h | 1,960 | 1,960 |
| 27 | 2 | Inception Phase Milestone | milestone | 0d | 2023-02-09 A | 2023-02-09 A | 1 | 100% |  |  |  |  |  |  |  |

| ID | WBS | Task | Type | Duration | Start | Finish | Predecessors | Total slack | Free slack | Resources | Work | Cost |
| --- | --- | --- | --- | --- | --- | --- | --- | --- | --- | --- | --- | --- |
| 28 | 3 | **Elaboration Phase** |  | 21d | 2023-02-09 | 2023-03-07 | 1 | 9.39d | 0d |  | 191h | 9,220 |
| 29 | 3.1 | **Business Model Analysis** |  | 12d | 2023-02-09 | 2023-02-23 |  | 9.39d | 0d |  | 107h | 5,195 |
| 30 | 3.1.1 | Create CRC cards |  | 3h | 2023-02-09 | 2023-02-09 |  | 18.96d | 9.57d | Developer; System Analyst; Business Analyst | 9h | 435 |
| 31 | 3.1.2 | Create fully dressed use case diagram |  | 2d | 2023-02-09 | 2023-02-10 |  | 12.39d | 3d | Business Analyst | 14h | 630 |
| 32 | 3.1.3 | Devise algorithms for data validation |  | 5d | 2023-02-09 | 2023-02-15 |  | 9.39d | 0d | Developer | 35h | 1,925 |
| 33 | 3.1.4 | Create use case descriptions |  | 4d | 2023-02-15 | 2023-02-20 | 31, 32 | 9.39d | 0d | Business Analyst | 28h | 1,260 |
| 34 | 3.1.5 | Perform second natural language analysis |  | 1d | 2023-02-21 | 2023-02-21 | 33 | 9.39d | 0d | System Analyst | 7h | 315 |
| 35 | 3.1.6 | Produce class diagrams |  | 2d | 2023-02-21 | 2023-02-23 | 30, 31, 32, 34 | 9.39d |  | System Analyst | 14h | 630 |
| 36 | 3.2 | **View Model Analysis** |  | 18d | 2023-02-09 | 2023-03-02 |  | 9.39d | 0d |  | 63h | 3,185 |
| 37 | 3.2.1 | Investigate software design principles |  | 2d | 2023-02-23 | 2023-02-27 | 29 | 9.39d | 0d | Business Analyst; System Analyst | 28h | 1,260 |
| 38 | 3.2.2 | Create wireframes |  | 1d | 2023-02-09 | 2023-02-09 |  | 26.39d |  | Developer | 7h | 385 |
| 39 | 3.2.3 | Create UI prototypes |  | 4d | 2023-02-27 | 2023-03-02 | 37 | 9.39d |  | Developer | 28h | 1,540 |
| 40 | 3.3 | Client meeting 3 |  | 1h | 2023-03-02 | 2023-03-02 | 29, 36 | 11.11d | 0d |  |  |  |
| 41 | 3.4 | Evaluate client meeting 3 |  | 1h | 2023-03-03 | 2023-03-03 | 40 | 11.11d | 0d |  |  |  |
| 42 | 3.5 | Iterate over model artefacts if necessary |  | 1d | 2023-03-03 | 2023-03-03 | 29, 36, 41 | 11.11d |  |  |  |  |
| 43 | 3.6 | Prepare Solution Planning Report |  | 3d | 2023-03-02 | 2023-03-07 | 29, 36 | 9.39d |  | Project Manager | 21h | 840 |
| 44 | 4 | Elaboration Phase Milestone | milestone | 0d | 2023-03-07 | 2023-03-07 | 28 | 63.57d |  |  |  |  |
| 45 | 5 | **Construction Phase** |  | 44.18d | 2023-03-07 | 2023-05-03 | 28, 1 | 9.39d | 0d |  | 441.5h | 23,687.5 |
| 46 | 5.1 | **Implementation Workflow** |  | 30.25d | 2023-03-07 | 2023-04-14 |  | 9.39d | 0d |  | 324.5h | 17,847.5 |
| 47 | 5.1.1 | Prepare IDE |  | 1h | 2023-03-07 | 2023-03-07 |  | 9.39d | 0d |  |  |  |
| 48 | 5.1.2 | Create Java project |  | 0.25h | 2023-03-07 | 2023-03-07 | 47 | 9.39d | 0d |  |  |  |
| 49 | 5.1.3 | **Coding of problem domain** |  | 14d | 2023-03-07 | 2023-03-23 | 48 | 9.39d | 0d |  | 99h | 5,445 |
| 50 | 5.1.3.1 | Create class structure to match design |  | 1h | 2023-03-07 | 2023-03-07 | 48 | 23.25d |  | Developer | 1h | 55 |
| 51 | 5.1.3.2 | Implement planned business model design |  | 14d | 2023-03-07 | 2023-03-23 | 28, 48 | 9.39d |  | Developer | 98h | 5,390 |

| ID | WBS | Task | Type | Duration | Start | Finish | Predecessors | Total slack | Free slack | Resources | Work | Cost |
| --- | --- | --- | --- | --- | --- | --- | --- | --- | --- | --- | --- | --- |
| 52 | 5.1.4 | **Coding of UI domain** |  | 12d | 2023-03-23 | 2023-04-11 | 49 | 9.39d | 0d |  | 224h | 12,320 |
| 53 | 5.1.4.1 | **Set up Graphical User Interface** |  | 2d | 2023-03-23 | 2023-03-27 |  | 9.39d | 0d |  | 84h | 4,620 |
| 54 | 5.1.4.1.1 | Set up GUI for Log In page to match UI prototypes |  | 2d | 2023-03-23 | 2023-03-27 |  | 9.39d |  | Developer | 14h | 770 |
| 55 | 5.1.4.1.2 | Set up GUI of navigation menu to match UI prototypes |  | 2d | 2023-03-23 | 2023-03-27 |  | 9.39d |  | Developer | 14h | 770 |
| 56 | 5.1.4.1.3 | Set up GUI for Home page to match UI prototypes |  | 2d | 2023-03-23 | 2023-03-27 |  | 9.39d |  | Developer | 14h | 770 |
| 57 | 5.1.4.1.4 | Set up GUI for Add New Case to match UI prototypes |  | 2d | 2023-03-23 | 2023-03-27 |  | 9.39d |  | Developer | 14h | 770 |
| 58 | 5.1.4.1.5 | Set up GUI for Viewing Cases to match UI prototypes |  | 2d | 2023-03-23 | 2023-03-27 |  | 9.39d |  | Developer | 14h | 770 |
| 59 | 5.1.4.1.6 | Set up GUI for Generate Reports to match UI prototypes |  | 2d | 2023-03-23 | 2023-03-27 |  | 9.39d |  | Developer | 14h | 770 |
| 60 | 5.1.4.2 | Register and program appropriate events |  | 10d | 2023-03-27 | 2023-04-11 | 53 | 9.39d |  | Developer | 70h | 3,850 |
| 61 | 5.1.4.3 | Implement error handling |  | 10d | 2023-03-23 | 2023-04-05 | 49 | 11.39d |  | Developer | 70h | 3,850 |
| 62 | 5.1.5 | Client meeting 4 - demonstrate evolving system |  | 0.5h | 2023-04-11 | 2023-04-11 | 49, 52 | 20.75d | 0d | Developer | 0.5h | 27.5 |
| 63 | 5.1.6 | Evaluate client meeting 4 |  | 1h | 2023-03-07 | 2023-03-07 |  | 50.86d |  | Developer | 1h | 55 |
| 64 | 5.1.7 | Identify missing requirements if necessary |  | 1d | 2023-04-11 | 2023-04-12 | 62 | 20.75d | 0d |  |  |  |
| 65 | 5.1.8 | Iterate over Implementation workflow if necessary |  | 3d | 2023-04-12 | 2023-04-14 | 64 | 20.75d |  |  |  |  |
| 66 | 5.2 | **Testing Workflow** |  | 18d | 2023-04-11 | 2023-05-03 | 49, 52 | 9.39d |  |  | 117h | 5,840 |
| 67 | 5.2.1 | Investigation of test strategies |  | 4h | 2023-04-14 | 2023-04-17 | 46 | 20.75d | 0d | Tester | 4h | 200 |
| 68 | 5.2.2 | Devise test cases |  | 2d | 2023-04-17 | 2023-04-19 | 67 | 20.75d |  | Tester | 14h | 700 |
| 69 | 5.2.3 | Prepare Test Plan report |  | 2d | 2023-04-11 | 2023-04-13 |  | 9.39d | 0d | Tester | 14h | 700 |
| 70 | 5.2.4 | Undertake test runs according to plan |  | 5d | 2023-04-13 | 2023-04-19 | 69 | 9.39d | 0d | Tester | 35h | 1,750 |
| 71 | 5.2.5 | Evaluate test results |  | 2d | 2023-04-19 | 2023-04-21 | 70 | 9.39d | 0d | Tester | 14h | 700 |
| 72 | 5.2.6 | Prepare Test Log report |  | 5d | 2023-04-21 | 2023-04-27 | 69, 70, 71 | 9.39d | 0d | Tester | 35h | 1,750 |
| 73 | 5.2.7 | Debugging if necessary |  | 4d | 2023-04-27 | 2023-05-03 | 72 | 9.39d |  |  |  |  |
| 74 | 5.2.8 | Client meeting 5 |  | 1h | 2023-04-11 | 2023-04-11 |  | 27.25d |  | Project Manager | 1h | 40 |
| 75 | 5.2.9 | Evaluate client meeting 5 |  | 0.5h | 2023-04-11 | 2023-04-11 |  | 27.32d |  |  |  |  |
| 76 | 6 | Construction Phase Milestone | milestone | 0d | 2023-05-03 | 2023-05-03 | 45 | 19.39d |  |  |  |  |

| ID | WBS | Task | Type | Duration | Start | Finish | Predecessors | Total slack | Free slack | Constraint | Resources | Work | Cost |
| --- | --- | --- | --- | --- | --- | --- | --- | --- | --- | --- | --- | --- | --- |
| 77 | 7 | **Transition Phase** |  | 21.93d | 2023-04-14 | 2023-05-12 | 46 | 11.39d | 0d |  |  | 71.5h | 3,665 |
| 78 | 7.1 | Review Executable System |  | 1d | 2023-04-14 | 2023-04-17 |  | 31.32d | 19.93d |  | Project Manager | 7h | 280 |
| 79 | 7.2 | Perform modifications if necessary |  | 1d | 2023-04-14 | 2023-04-17 |  | 24.32d | 0d |  |  |  |  |
| 80 | 7.3 | Prepare installation manual |  | 2d | 2023-04-17 | 2023-04-19 | 79 | 29.32d | 17.93d |  | System Analyst | 14h | 630 |
| 81 | 7.4 | Prepare user manual |  | 7d | 2023-05-03 | 2023-05-11 | 45, 79 | 11.39d | 0d |  | Developer | 49h | 2,695 |
| 82 | 7.5 | Client meeting 6 |  | 1h | 2023-05-11 | 2023-05-11 | 79, 80, 81 | 12.18d | 0d |  | Project Manager | 1h | 40 |
| 83 | 7.6 | Evaluate client meeting 6 |  | 0.5h | 2023-05-11 | 2023-05-11 | 82 | 12.18d |  |  | Project Manager | 0.5h | 20 |
| 84 | 7.7 | Distribute executable system and supporting documentation |  | 1d | 2023-05-11 | 2023-05-12 | 78, 80, 81 | 11.39d |  |  |  |  |  |
| 85 | 8 | Transition Phase Milestone | milestone | 0d | 2023-05-12 | 2023-05-12 | 77 | 11.39d |  |  |  |  |  |
| 86 | 9 | **Project Evaluation** |  | 10d | 2023-05-03 | 2023-05-15 | 45, 1, 28 | 9.39d | 0d |  |  |  |  |
| 87 | 9.1 | Evaluate solution against requirements outlined at Inception |  | 5d | 2023-05-03 | 2023-05-09 |  | 9.39d | 0d |  |  |  |  |
| 88 | 9.2 | Reflect on strengths and weaknesses of all deliverables produced |  | 5d | 2023-05-03 | 2023-05-09 |  | 9.39d | 0d |  |  |  |  |
| 89 | 9.3 | Devise recommendations for future development of solution |  | 5d | 2023-05-03 | 2023-05-09 |  | 9.39d | 0d |  |  |  |  |
| 90 | 9.4 | Prepare summary of modifications to any project phase |  | 5d | 2023-05-03 | 2023-05-09 |  | 9.39d | 0d |  |  |  |  |
| 91 | 9.5 | Evaluate knowledge and skills gained from project |  | 5d | 2023-05-03 | 2023-05-09 |  | 9.39d | 0d |  |  |  |  |
| 92 | 9.6 | Identify how process could be improved |  | 5d | 2023-05-03 | 2023-05-09 |  | 9.39d | 0d |  |  |  |  |
| 93 | 9.7 | Prepare Evaluation report |  | 5d | 2023-05-09 | 2023-05-15 | 87, 88, 89, 90, 91, 92 | 9.39d |  |  |  |  |  |
| 94 | 10 | Evaluation Milestone | milestone | 0d | 2023-05-15 | 2023-05-15 | 86 | 9.39d |  |  |  |  |  |
| 95 | 11 | Project Completion Milestone | milestone | 0d | 2023-05-15 | 2023-05-15 | 1, 28, 45, 86 | 9.39d |  |  |  |  |  |
| 96 | 12 | SQA Deadline | milestone | 0d | 2023-05-26 | 2023-05-26 |  | 0d |  | start no earlier than 2023-05-26 |  |  |  |
